# new Gantte2

Schedule from MS Project, 2017-10-02 to 2018-01-11, status date 2017-11-13, 2 hours a day, A marks actual dates.
mycomputer

## Calendars

- 标准: Mon-Fri 08:00-12:00, 13:00-17:00; Sat-Sun off. Exceptions (off unless hours are given): 2017-10-15 08:00-12:00, 13:00-17:00, 2017-12-02 to 2017-12-03 08:00-12:00, 13:00-17:00, 2017-12-09 to 2017-12-10 08:00-12:00, 13:00-17:00, 2017-12-17 08:00-12:00, 13:00-17:00, 2017-12-23 to 2017-12-24 08:00-12:00, 13:00-17:00, 2018-01-06 to 2018-01-07 08:00-12:00, 13:00-17:00.

## Resources

| Resource |
| --- |
| 叶港归 |
| 马思旖 |
| 周皙昊 |

## Schedule

| ID | WBS | Task | Type | Duration | Start | Finish | Predecessors | Complete | Remaining | Actual finish | Constraint | Deadline | Resources | Work | Actual work |
| --- | --- | --- | --- | --- | --- | --- | --- | --- | --- | --- | --- | --- | --- | --- | --- |
| 1 | 1 | **RPG游戏开发** |  | 338.5d | 2017-10-02 A | 2018-01-11 |  | 99% | 0.62d |  |  | 2018-01-10 |  | 1313.17h | 1307.17h |
| 2 | 1.1 | **项目介绍** |  | 42.5d | 2017-10-02 A | 2017-10-13 A |  | 100% |  |  |  |  |  | 64.33h | 64.33h |
| 3 | 1.1.1 | 会议讨论 | manual | 1d | 2017-10-02 A | 2017-10-02 A |  | 100% |  |  |  |  | 马思旖; 叶港归; 周皙昊 | 6h | 6h |
| 4 | 1.1.2 | 研究项目目标 | manual | 10d | 2017-10-02 A | 2017-10-04 A |  | 100% |  |  | finish no earlier than 2017-10-06 |  | 叶港归; 马思旖; 周皙昊 | 28.33h | 28.33h |
| 5 | 1.1.3 | 项目计划调整 | manual | 1d | 2017-10-13 A | 2017-10-13 A | 4 | 100% |  |  |  |  | 马思旖; 叶港归; 周皙昊 | 6h | 6h |
| 6 | 1.1.4 | 确认项目目标 | manual | 4d | 2017-10-13 A | 2017-10-13 A | 5 | 100% |  |  | must finish on 2017-10-13 |  | 马思旖; 叶港归; 周皙昊 | 24h | 24h |
| 7 | 1.2 | **项目计划** |  | 57d | 2017-10-09 A | 2017-10-26 |  | 100% |  | 2017-10-25 |  |  |  | 118h | 118h |
| 8 | 1.2.1 | 会议讨论 | manual | 1d | 2017-10-15 A | 2017-10-15 A |  | 100% |  |  | finish no earlier than 2017-10-15 |  | 马思旖; 叶港归; 周皙昊 | 6h | 6h |
| 9 | 1.2.2 | wbs绘制 | manual | 2d | 2017-10-10 A | 2017-10-10 A |  | 100% |  |  | start no earlier than 2017-10-09 |  | 马思旖 | 4h | 4h |
| 10 | 1.2.3 | 甘特图绘制 | manual | 3d | 2017-10-09 A | 2017-10-10 A |  | 100% |  |  | finish no earlier than 2017-10-12 |  | 叶港归 | 6h | 6h |
| 11 | 1.2.4 | 项目计划书编写 | manual | 32d | 2017-10-09 A | 2017-10-17 A | 6 | 100% |  |  | must finish on 2017-10-18 |  | 叶港归 | 64h | 64h |
| 12 | 1.2.5 | 项目计划书修订 | manual | 1d | 2017-10-18 A | 2017-10-18 A | 11 | 100% |  |  |  |  | 叶港归 | 2h | 2h |
| 13 | 1.2.6 | 项目计划ppt | manual | 24d | 2017-10-17 A | 2017-10-24 A |  | 100% |  |  | must finish on 2017-10-24 |  | 马思旖 | 24h | 24h |
| 14 | 1.2.7 | 项目计划ppt修订 | manual | 1d | 2017-10-25 A | 2017-10-25 A | 13 | 100% |  |  |  |  | 马思旖 | 2h | 2h |
| 15 | 1.2.8 | 甘特图调整 | manual | 1d | 2017-10-25 A | 2017-10-25 A | 10 | 100% |  |  |  |  | 叶港归 | 2h | 2h |
| 16 | 1.2.9 | 提交项目计划 | manual | 4d | 2017-10-25 A | 2017-10-25 A | 8, 9, 10, 11, 12, 13, 14, 15 | 100% |  |  | must finish on 2017-10-25 |  | 周皙昊 | 8h | 8h |
| 17 | 1.3 | **可行性分析** |  | 66.5d | 2017-10-18 A | 2017-11-08 |  | 100% |  | 2017-11-07 |  |  |  | 54h | 54h |
| 18 | 1.3.1 | 会议讨论 | manual | 1d | 2017-10-20 A | 2017-10-20 A |  | 100% |  |  | finish no earlier than 2017-10-20 |  | 马思旖; 叶港归; 周皙昊 | 6h | 6h |
| 19 | 1.3.2 | 可行性分析报告 | manual | 24d | 2017-10-18 A | 2017-10-25 A |  | 100% |  |  | start no earlier than 2017-10-18 |  | 周皙昊 | 24h | 24h |
| 20 | 1.3.3 | 甘特图修改 |  | 1d | 2017-11-04 A | 2017-11-04 A | 15, 19 | 100% |  |  |  |  | 叶港归 | 2h | 2h |
| 21 | 1.3.4 | 可行性分析修订 | manual | 20d | 2017-10-31 A | 2017-11-06 A | 20 | 100% |  |  | finish no earlier than 2017-10-31 |  | 周皙昊 | 12h | 12h |
| 22 | 1.3.5 | 甘特图修改 | manual | 1d | 2017-11-07 A | 2017-11-07 A | 15 | 100% |  |  |  |  | 叶港归 | 2h | 2h |
| 23 | 1.3.6 | 提交报告 | manual | 4d | 2017-11-07 A | 2017-11-07 A | 22, 18, 19, 21, 20 | 100% |  |  | start no earlier than 2017-11-01 |  | 马思旖 | 8h | 8h |
| 24 | 1.4 | **需求分析** |  | 56.5d | 2017-10-26 A | 2017-11-15 A |  | 100% |  |  |  |  |  | 139h | 139h |
| 25 | 1.4.1 | 会议讨论 | manual | 1d | 2017-10-26 A | 2017-10-26 A |  | 100% |  |  | finish no earlier than 2017-10-26 |  | 马思旖; 叶港归; 周皙昊 | 6h | 6h |
| 26 | 1.4.2 | 需求分析报告 | manual | 20d | 2017-11-05 A | 2017-11-10 A |  | 100% |  |  | finish no earlier than 2017-11-11 |  | 叶港归 | 24h | 24h |
| 27 | 1.4.3 | 数据字典定义 | manual | 1d | 2017-11-13 A | 2017-11-13 A |  | 100% |  |  |  |  | 周皙昊 | 2h | 2h |
| 28 | 1.4.4 | ER图绘制 | manual | 1d | 2017-11-13 A | 2017-11-13 A |  | 100% |  |  |  |  | 叶港归 | 2h | 2h |
| 29 | 1.4.5 | 需求分析修订 |  | 7.5d | 2017-11-10 A | 2017-11-14 A | 26 | 100% |  |  | start no earlier than 2017-11-10 |  | 叶港归 | 17h | 17h |
| 30 | 1.4.6 | 界面原型设计 | manual | 20d | 2017-11-05 A | 2017-11-10 A |  | 100% |  |  | finish no earlier than 2017-11-11 |  | 马思旖 | 24h | 24h |
| 31 | 1.4.7 | 需求分析ppt | manual | 12d | 2017-11-07 A | 2017-11-10 A |  | 100% |  |  | finish no earlier than 2017-11-11 |  | 马思旖 | 24h | 24h |
| 32 | 1.4.8 | 用户代表确立 | manual | 1d | 2017-11-13 A | 2017-11-13 A |  | 100% |  |  |  |  | 马思旖 | 2h | 2h |
| 33 | 1.4.9 | 用户代表采访 | manual | 1d | 2017-11-13 A | 2017-11-13 A | 32 | 100% |  |  |  |  | 马思旖 | 2h | 2h |
| 34 | 1.4.10 | 界面原型修订 | manual | 0.5d | 2017-11-13 A | 2017-11-13 A | 33, 30 | 100% |  |  |  |  | 叶港归; 周皙昊 | 2h | 2h |
| 35 | 1.4.11 | 需求分析ppt修订 | manual | 2d | 2017-11-10 A | 2017-11-10 A | 31 | 100% |  |  |  |  | 马思旖 | 4h | 4h |
| 36 | 1.4.12 | 提交需求分析 |  | 15d | 2017-11-08 A | 2017-11-15 A | 29, 30 | 100% |  |  | finish no earlier than 2017-11-11 |  | 周皙昊 | 30h | 30h |

| ID | WBS | Task | Type | Duration | Start | Finish | Predecessors | Complete | Actual finish | Constraint | Resources | Work | Actual work |
| --- | --- | --- | --- | --- | --- | --- | --- | --- | --- | --- | --- | --- | --- |
| 37 | 1.5 | **项目设计** |  | 87d | 2017-11-09 A | 2017-12-06 |  | 100% | 2017-12-05 |  |  | 284.04h | 284.04h |
| 38 | 1.5.1 | 会议讨论 |  | 1d | 2017-11-17 A | 2017-11-20 A |  | 100% |  | finish no earlier than 2017-11-09 | 周皙昊 | 2h | 2h |
| 39 | 1.5.2 | HIPO图绘制 |  | 1d | 2017-11-09 A | 2017-11-09 A |  | 100% |  |  | 周皙昊 | 2h | 2h |
| 40 | 1.5.3 | 总体设计 | manual | 10d | 2017-11-09 A | 2017-11-13 A |  | 100% |  | must finish on 2017-11-22 | 马思旖; 周皙昊 | 33.75h | 33.75h |
| 41 | 1.5.4 | 会议讨论 |  | 1d | 2017-11-27 A | 2017-11-27 A |  | 100% |  | start no earlier than 2017-11-24 | 周皙昊 | 2h | 2h |
| 42 | 1.5.5 | 详细设计 | manual | 44d | 2017-11-16 A | 2017-11-30 A |  | 100% |  | must finish on 2017-11-30 | 叶港归; 周皙昊 | 108h | 108h |
| 43 | 1.5.6 | 会议讨论 |  | 1d | 2017-12-01 A | 2017-12-01 A | 42 | 100% |  |  | 周皙昊 | 2h | 2h |
| 44 | 1.5.7 | 设计ppt | manual | 20.5d | 2017-11-29 A | 2017-12-03 A |  | 100% |  | start no earlier than 2017-11-29 | 马思旖; 叶港归; 周皙昊 | 123h | 123h |
| 45 | 1.5.8 | 可行性分析报告修订 |  | 1d | 2017-12-03 A | 2017-12-03 A |  | 100% |  | start no earlier than 2017-12-02 | 马思旖; 周皙昊 | 4h | 4h |
| 46 | 1.5.9 | 需求分析报告修订 |  | 1d | 2017-12-03 A | 2017-12-03 A |  | 100% |  | start no earlier than 2017-12-02 | 马思旖; 叶港归 | 4h | 4h |
| 47 | 1.5.10 | 设计ppt修订 | manual | 1d | 2017-12-03 A | 2017-12-03 A |  | 100% |  | start no earlier than 2017-12-03 | 马思旖 | 1.29h | 1.29h |
| 48 | 1.5.11 | 提交项目设计 | manual | 1d | 2017-12-05 A | 2017-12-05 A |  | 100% |  | start no earlier than 2017-12-05 | 马思旖 | 2h | 2h |
| 49 | 1.6 | **实现** |  | 51.5d? | 2017-11-30 A | 2017-12-13 A |  | 100% |  |  |  | 288.8h | 288.8h |
| 50 | 1.6.1 | 代码规范编写 | manual | 3.5d | 2017-11-30 A | 2017-11-30 A |  | 100% |  | finish no earlier than 2017-12-13 | 马思旖; 叶港归; 周皙昊 | 8.66h | 8.66h |
| 51 | 1.6.2 | 游戏素材寻找 |  | 28d | 2017-11-30 A | 2017-12-06 A |  | 100% |  | finish no earlier than 2017-12-06 | 叶港归; 周皙昊 | 112h | 112h |
| 52 | 1.6.3 | 编码 | manual | 39.5d | 2017-11-30 A | 2017-12-12 A |  | 100% |  | finish no earlier than 2017-12-13 | 马思旖; 叶港归; 周皙昊 | 154.14h | 154.14h |
| 53 | 1.6.4 | 会议讨论 |  | 1d | 2017-12-05 A | 2017-12-05 A |  | 100% |  | start no earlier than 2017-12-04 | 周皙昊 | 2h | 2h |
| 54 | 1.6.5 | 甘特图调整 |  | 1d | 2017-12-07 A | 2017-12-07 A |  | 100% |  | start no earlier than 2017-12-06 | 马思旖 | 2h | 2h |
| 55 | 1.6.6 | 会议讨论 |  | 1d | 2017-12-11 A | 2017-12-11 A |  | 100% |  | start no earlier than 2017-12-09 | 周皙昊 | 2h | 2h |
| 56 | 1.6.7 | 用户手册书写 |  | 1d | 2017-12-12 A | 2017-12-12 A |  | 100% |  | start no earlier than 2017-12-11 | 马思旖 | 2h | 2h |
| 57 | 1.6.8 | 代码走查 |  | 1d | 2017-12-13 A | 2017-12-13 A |  | 100% |  | start no earlier than 2017-12-12 | 马思旖; 叶港归; 周皙昊 | 6h | 6h |
| 58 | 1.7 | **项目测试** |  | 90.5d | 2017-12-14 A | 2018-01-07 A | 37 | 100% |  |  |  | 333h | 333h |
| 59 | 1.7.1 | 测试报告计划编写 |  | 40d | 2017-12-14 A | 2017-12-25 A |  | 100% |  | finish no earlier than 2017-12-25 | 叶港归 | 80h | 80h |
| 60 | 1.7.2 | 测试用例编写 |  | 40d | 2017-12-14 A | 2017-12-25 A |  | 100% |  | finish no earlier than 2017-12-25 | 叶港归 | 80h | 80h |
| 61 | 1.7.3 | 软件测试 |  | 36.5d | 2017-12-15 A | 2017-12-25 A | 52, 50 | 100% |  | start no earlier than 2017-12-15 | 马思旖; 叶港归; 周皙昊 | 75h | 75h |
| 62 | 1.7.4 | 评审ppt制作 |  | 28d | 2017-12-18 A | 2017-12-24 A |  | 100% |  | start no earlier than 2017-12-17 | 马思旖 | 56h | 56h |
| 63 | 1.7.5 | 会议讨论 |  | 1d | 2017-12-18 A | 2017-12-18 A |  | 100% |  | start no earlier than 2017-12-17 | 周皙昊 | 2h | 2h |
| 64 | 1.7.6 | 甘特图调整 |  | 2d | 2017-12-19 A | 2017-12-20 A |  | 100% |  | finish no earlier than 2017-12-20 | 马思旖 | 4h | 4h |
| 65 | 1.7.7 | 用户回访1.0 |  | 1d | 2017-12-19 A | 2017-12-19 A |  | 100% |  | start no earlier than 2017-12-18 | 马思旖 | 2h | 2h |
| 66 | 1.7.8 | 需求分析报告修订 |  | 1d | 2017-12-20 A | 2017-12-21 A |  | 100% |  | start no earlier than 2017-12-02 | 马思旖; 叶港归 | 4h | 4h |
| 67 | 1.7.9 | 可行性分析报告修订 |  | 1d | 2017-12-20 A | 2017-12-21 A |  | 100% |  | start no earlier than 2017-12-02 | 马思旖; 周皙昊 | 4h | 4h |
| 68 | 1.7.10 | 用户手册修订 |  | 1d | 2017-12-23 A | 2017-12-23 A |  | 100% |  | start no earlier than 2017-12-22 | 马思旖 | 2h | 2h |
| 69 | 1.7.11 | 提交项目测试 | manual | 1d | 2017-12-25 A | 2017-12-25 A |  | 100% |  |  | 马思旖 | 2h | 2h |
| 70 | 1.7.12 | 会议讨论 |  | 1d | 2017-12-25 A | 2017-12-25 A |  | 100% |  | start no earlier than 2017-12-23 | 周皙昊 | 2h | 2h |
| 71 | 1.7.13 | NPC属性调整 |  | 2d | 2017-12-27 A | 2017-12-29 A |  | 100% |  | finish no earlier than 2017-12-31 | 周皙昊 | 4h | 4h |
| 72 | 1.7.14 | 项目计划修改 | manual | 1d | 2017-12-31 A | 2017-12-31 A |  | 100% |  |  | 马思旖 | 2h | 2h |
| 73 | 1.7.15 | 概要设计修改 | manual | 1d | 2018-01-02 A | 2018-01-02 A |  | 100% |  |  | 马思旖 | 2h | 2h |
| 74 | 1.7.16 | 详细设计修改 | manual | 1d | 2018-01-03 A | 2018-01-03 A |  | 100% |  |  | 马思旖; 叶港归 | 4h | 4h |
| 75 | 1.7.17 | 评审ppt修改 |  | 1d | 2018-01-05 A | 2018-01-06 A |  | 100% |  | start no earlier than 2017-12-17 | 马思旖 | 2h | 2h |
| 76 | 1.7.18 | 测试评审 |  | 1d | 2018-01-07 A | 2018-01-07 A |  | 100% |  | start no earlier than 2018-01-06 | 马思旖; 叶港归; 周皙昊 | 6h | 6h |

| ID | WBS | Task | Type | Duration | Start | Finish | Predecessors | Complete | Remaining | Total slack | Constraint | Resources | Work | Actual work |
| --- | --- | --- | --- | --- | --- | --- | --- | --- | --- | --- | --- | --- | --- | --- |
| 77 | 1.8 | **项目验收** |  | 20.5d | 2018-01-06 A | 2018-01-10 | 49, 58 | 92% | 1.71d |  |  |  | 32h | 26h |
| 78 | 1.8.1 | 项目计划文档修订 |  | 1d | 2018-01-06 A | 2018-01-07 A |  | 100% |  |  | start no earlier than 2017-12-02 | 叶港归 | 2h | 2h |
| 79 | 1.8.2 | 测试用例文档修订 |  | 1d | 2018-01-06 A | 2018-01-07 A |  | 100% |  |  | start no earlier than 2017-12-02 | 叶港归 | 2h | 2h |
| 80 | 1.8.3 | 可行性分析报告修订 |  | 1d | 2018-01-06 A | 2018-01-07 A |  | 100% |  |  | start no earlier than 2017-12-02 | 马思旖; 周皙昊 | 4h | 4h |
| 81 | 1.8.4 | 用户回访2.0 |  | 1d | 2018-01-08 A | 2018-01-08 A |  | 100% |  |  | start no earlier than 2018-01-07 | 马思旖 | 2h | 2h |
| 82 | 1.8.5 | 需求分析修订 |  | 1d | 2018-01-07 A | 2018-01-07 A |  | 100% |  |  | start no earlier than 2018-01-06 | 马思旖; 周皙昊 | 2h | 2h |
| 83 | 1.8.6 | 详细设计修订 | manual | 1d | 2018-01-07 A | 2018-01-07 A |  | 100% |  |  |  | 马思旖 | 2h | 2h |
| 84 | 1.8.7 | 总体设计修订 | manual | 1d | 2018-01-07 A | 2018-01-07 A |  | 100% |  |  |  | 马思旖 | 2h | 2h |
| 85 | 1.8.8 | 黑盒测试修订 |  | 1d | 2018-01-07 A | 2018-01-07 A |  | 100% |  |  | start no earlier than 2018-01-06 | 马思旖; 叶港归 | 2h | 2h |
| 86 | 1.8.9 | ppt制作 |  | 1d | 2018-01-07 A | 2018-01-07 A |  | 100% |  |  | start no earlier than 2018-01-06 | 马思旖 | 2h | 2h |
| 87 | 1.8.10 | 用户手册文档修订 |  | 1d | 2018-01-08 A | 2018-01-09 A |  | 100% |  |  | start no earlier than 2017-12-02 | 马思旖; 周皙昊 | 4h | 4h |
| 88 | 1.8.11 | 会议讨论 |  | 1d | 2018-01-09 A | 2018-01-09 A |  | 100% |  |  | start no earlier than 2018-01-08 | 周皙昊 | 2h | 2h |
| 89 | 1.8.12 | 评审 |  | 1d | 2018-01-10 | 2018-01-10 |  |  |  | 7d | start no earlier than 2018-01-09 | 马思旖; 叶港归; 周皙昊 | 6h |  |
